| ParentTaskUID | Name | Start | _level | Critical | Finish | PercentComplete | Milestone | OutlineLevel | Summary | UID | Duration | OutlineNumber | isLeaf | PredecessorLink |
| --- | --- | --- | --- | --- | --- | --- | --- | --- | --- | --- | --- | --- | --- | --- |
| -1 | 项目范围规划 | 2007-01-01T00:00:00 | 1 | 0 | 2007-01-10T00:00:00 | 0 | 0 | 1 | 1 | 1 | 8 | 1 |  |  |
| 1 | 确定项目范围 | 2007-01-01T00:00:00 | 2 | 0 | 2007-01-01T23:23:59 | 30 | 0 | 2 | 0 | 2 | 1 | 1.1 | True |  |
| 1 | 获得项目所需资金 | 2007-01-02T00:00:00 | 2 | 0 | 2007-01-03T23:23:59 | 60 | 0 | 2 | 0 | 3 | 2 | 1.2 | True | 1 2 |
| 1 | 定义预备资源 | 2007-01-04T00:00:00 | 2 | 1 | 2007-01-05T23:23:59 | 40 | 0 | 2 | 0 | 4 | 2 | 1.3 | True | 1 3 |
| 1 | 获得核心资源 | 2007-01-08T00:00:00 | 2 | 0 | 2007-01-09T23:23:59 | 90 | 0 | 2 | 0 | 5 | 2 | 1.4 | True | 1 4 |
| 1 | 完成项目范围规划 | 2007-01-10T00:00:00 | 2 | 0 | 2007-01-10T00:00:00 | 10 | 1 | 2 | 0 | 6 | 0 | 1.5 | True | 1 5 |
| -1 | 分析/软件需求 | 2007-01-11T00:00:00 | 1 | 0 | 2007-02-07T00:00:00 | 40 | 0 | 1 | 1 | 7 | 20 | 2 |  |  |
| 7 | 行为需求分析 | 2007-01-11T00:00:00 | 2 | 0 | 2007-01-18T23:23:59 | 50 | 0 | 2 | 0 | 8 | 6 | 2.1 | True | 1 6 |
| 7 | 起草初步的软件规范 | 2007-01-19T00:00:00 | 2 | 0 | 2007-01-24T23:23:59 | 70 | 0 | 2 | 0 | 9 | 4 | 2.2 | True | 1 8 |
| 7 | 制定初步预算 | 2007-01-25T00:00:00 | 2 | 0 | 2007-01-29T23:23:59 | 30 | 0 | 2 | 0 | 10 | 3 | 2.3 | True | 1 9 |
| 7 | 工作组共同审阅软件规范/预算 | 2007-01-30T00:00:00 | 2 | 0 | 2007-01-30T23:23:59 | 20 | 0 | 2 | 0 | 11 | 1 | 2.4 | True | 1 10 |
| 7 | 根据反馈修改软件规范 | 2007-01-31T00:00:00 | 2 | 0 | 2007-01-31T23:23:59 | 0 | 0 | 2 | 0 | 12 | 1 | 2.5 | True | 1 11 |
| 7 | 制定交付期限 | 2007-02-01T00:00:00 | 2 | 0 | 2007-02-01T23:23:59 | 0 | 0 | 2 | 0 | 13 | 1 | 2.6 | True | 1 12 |
| 7 | 获得开展后续工作的批准(概念、期限和预算) | 2007-02-02T00:00:00 | 2 | 0 | 2007-02-02T23:23:59 | 0 | 0 | 2 | 0 | 14 | 1 | 2.7 | True | 1 13 |
| 7 | 获得所需资源 | 2007-02-05T00:00:00 | 2 | 0 | 2007-02-06T23:23:59 | 0 | 0 | 2 | 0 | 15 | 2 | 2.8 | True | 1 14 |
| 7 | 完成分析工作 | 2007-02-07T00:00:00 | 2 | 0 | 2007-02-07T00:00:00 | 0 | 1 | 2 | 0 | 16 | 0 | 2.9 | True | 1 15 |
| -1 | 设计 | 2007-02-08T00:00:00 | 1 | 0 | 2007-03-08T00:00:00 | 0 | 0 | 1 | 1 | 17 | 21 | 3 |  |  |
| 17 | 审阅初步的软件规范 | 2007-02-08T00:00:00 | 2 | 0 | 2007-02-12T23:23:59 | 0 | 0 | 2 | 0 | 18 | 3 | 3.1 | True | 1 16 |
| 17 | 制定功能规范 | 2007-02-13T00:00:00 | 2 | 0 | 2007-02-20T23:23:59 | 0 | 0 | 2 | 0 | 19 | 6 | 3.2 | True | 1 18 |
| 17 | 根据功能规范开发原型 | 2007-02-21T00:00:00 | 2 | 0 | 2007-02-27T23:23:59 | 0 | 0 | 2 | 0 | 20 | 5 | 3.3 | True | 1 19 |
